# gantt

How a schedule from MS Project changed from version to version. A marks actual dates.

## Version 1 (saved 2025-05-27)

| ID | WBS | Task | Duration | Start | Finish | Predecessors | Total float |
| --- | --- | --- | --- | --- | --- | --- | --- |
| 1 | 1 | **Diplomas y Certificados v1** | 29d | 2025-06-03 | 2025-07-11 |  |  |
| 2 | 1.1 | **Panel de usuario** | 8d | 2025-06-03 | 2025-06-12 |  | 0d |
| 3 |  | Acceso de Usuario | 1d | 2025-06-03 | 2025-06-03 |  | 0d |
| 4 |  | Home | 1d | 2025-06-04 | 2025-06-04 | 3 | 0d |
| 5 |  | Mis cursos | 2d | 2025-06-05 | 2025-06-06 | 4 | 0d |
| 6 |  | Ver certificado | 3d | 2025-06-09 | 2025-06-11 | 5 | 0d |
| 7 |  | Perfil | 1d | 2025-06-12 | 2025-06-12 | 6 | 0d |
| 8 | 1.2 | **Panel de administrador** | 14d | 2025-06-13 | 2025-07-02 |  | 0d |
| 9 |  | Acceso de Administrador | 1d | 2025-06-13 | 2025-06-13 | 7 | 0d |
| 10 |  | Home | 1d | 2025-06-16 | 2025-06-16 | 9 | 0d |
| 11 |  | Mantenimiento de cursos | 2d | 2025-06-17 | 2025-06-18 | 10 | 0d |
| 12 |  | Mantenimiento de categorias | 2d | 2025-06-19 | 2025-06-20 | 11 | 0d |
| 13 |  | Mantenimiento de instructores | 2d | 2025-06-23 | 2025-06-24 | 12 | 0d |
| 14 |  | Mantenimiento de usuarios | 2d | 2025-06-25 | 2025-06-26 | 13 | 0d |
| 15 |  | Detalle de certificados | 3d | 2025-06-27 | 2025-07-01 | 14 | 0d |
| 16 |  | Perfil | 1d | 2025-07-02 | 2025-07-02 | 15 | 0d |
| 17 | 1.3 | **Pruebas** | 7d | 2025-07-03 | 2025-07-11 |  | 0d |
| 18 |  | Pruebas con el cliente | 5d | 2025-07-03 | 2025-07-09 | 16 | 0d |
| 19 |  | Corrección y observaciones | 2d | 2025-07-10 | 2025-07-11 | 18 | 0d |
| 20 |  | Diplomas y Certificados v2 | 1d? | 2025-05-27 | 2025-05-27 |  |  |

## Version 2 (saved 2025-06-09)

Note of the change: Agregamos ña vista de certificados al proyecto e incluimos un prototipo del diseño de un certificado.

Last finish stays 2025-07-11.

Changed:

| ID | Task | Start | Complete | Total float |
| --- | --- | --- | --- | --- |
| 1 | **Diplomas y Certificados v1** | 2025-06-03 A | 0% → 5% |  |
| 2 | **Panel de usuario** | 2025-06-03 A | 0% → 17% |  |
| 3 | Acceso de Usuario | 2025-06-03 A | 0% → 20% | 0d → 0.1d |
| 4 | Home | 2025-06-04 A | 0% → 10% | 0d → 0.2d |
| 5 | Mis cursos | 2025-06-05 A | 0% → 10% | 0d → 0.75d |
| 6 | Ver certificado | 2025-06-09 A | 0% → 25% | 0d → 0.1d |
| 7 | Perfil | 2025-06-12 A | 0% → 10% |  |

## Version 3 (saved 2025-08-05)

Note of the change: Podemos actualizar correctamente los datos del perfil de un usuario, y recibimos confirmación visual de dicha acción.

Last finish stays 2025-07-11. Complete tasks 0 → 5.

Changed:

| ID | Task | Finish | Complete | Total float |
| --- | --- | --- | --- | --- |
| 1 | **Diplomas y Certificados v1** |  | 5% → 28% |  |
| 2 | **Panel de usuario** | 2025-06-12 A | 17% → 100% | 0d → none |
| 3 | Acceso de Usuario | 2025-06-03 A | 20% → 100% | 0.1d → none |
| 4 | Home | 2025-06-04 A | 10% → 100% | 0.2d → none |
| 5 | Mis cursos | 2025-06-06 A | 10% → 100% | 0.75d → none |
| 6 | Ver certificado | 2025-06-11 A | 25% → 100% | 0.1d → none |
| 7 | Perfil | 2025-06-12 A | 10% → 100% | 0d → none |

## Version 4 (saved 2025-08-05)

Note of the change: Creamos el modelo de datos de la clase Cursos, que se encarga de gestionar los registros de los cursos en la aplicación, interactuando directamente con la base de datos.

Last finish stays 2025-07-11. Complete tasks 5 → 6.

Changed:

| ID | Task | Start | Finish | Complete | Total float |
| --- | --- | --- | --- | --- | --- |
| 1 | **Diplomas y Certificados v1** |  |  | 28% → 31% |  |
| 8 | **Panel de administrador** | 2025-06-13 A |  | 0% → 7% |  |
| 9 | Acceso de Administrador | 2025-06-13 A | 2025-06-13 A | 0% → 100% | 0d → none |

## Version 5 (saved 2025-08-15)

Note of the change: Creamos un mecanismo de eliminación de un curso en la vista de un perfil Administrador.

Last finish stays 2025-07-11. Complete tasks 6 → 8.

Changed:

| ID | Task | Start | Finish | Complete | Total float |
| --- | --- | --- | --- | --- | --- |
| 1 | **Diplomas y Certificados v1** |  |  | 31% → 41% |  |
| 8 | **Panel de administrador** |  |  | 7% → 29% | 0d → 7d |
| 11 | Mantenimiento de cursos | 2025-06-17 A | 2025-06-18 A | 0% → 100% | 0d → none |
| 16 | Perfil | 2025-07-02 A | 2025-07-02 A | 0% → 100% | 0d → none |

## Version 6 (saved 2025-08-19)

Note of the change: Creamos un mecanimo CRUD para las categorias a las que pertenecen los cursos. Estas podrán accederse desde un perfil de Administrador en el sistema.

Last finish stays 2025-07-11. Complete tasks 8 → 9.

Changed:

| ID | Task | Start | Finish | Complete | Total float |
| --- | --- | --- | --- | --- | --- |
| 1 | **Diplomas y Certificados v1** |  |  | 41% → 48% |  |
| 8 | **Panel de administrador** |  |  | 29% → 43% |  |
| 12 | Mantenimiento de categorias | 2025-06-19 A | 2025-06-20 A | 0% → 100% | 8d → none |

## Version 7 (saved 2025-08-26)

Note of the change: Corregimos errores en la edición de instructores, al precargar los datos en el modal de edición.

Last finish stays 2025-07-11. Complete tasks 9 → 10.

Changed:

| ID | Task | Start | Finish | Complete | Total float |
| --- | --- | --- | --- | --- | --- |
| 1 | **Diplomas y Certificados v1** |  |  | 48% → 57% |  |
| 8 | **Panel de administrador** |  |  | 43% → 61% |  |
| 10 | Home | 2025-06-16 A |  | 0% → 50% |  |
| 13 | Mantenimiento de instructores | 2025-06-23 A | 2025-06-24 A | 0% → 100% | 8d → none |

## Version 8 (saved 2025-08-28)

Note of the change: Creamos un mecanismo CRUD para los usuarios de los cursos. Es decir, un usuario con el rol de administrador podrá modificar los detalles de otros usuarios, así como asignar nuevos roles a estos, o eliminarlos.

Last finish stays 2025-07-11. Complete tasks 10 → 11.

Changed:

| ID | Task | Start | Finish | Complete | Total float |
| --- | --- | --- | --- | --- | --- |
| 1 | **Diplomas y Certificados v1** |  |  | 57% → 64% |  |
| 8 | **Panel de administrador** |  |  | 61% → 75% |  |
| 14 | Mantenimiento de usuarios | 2025-06-25 A | 2025-06-26 A | 0% → 100% | 8d → none |

## Version 9 (saved 2025-09-23)

Note of the change: Podemos agregar/quitar el acceso a un certificado a multiples usuarios, desde una cuenta de administrador, desde la ventana Detalle Certificado.

Last finish stays 2025-07-11. Complete tasks 11 → 13.

Changed:

| ID | Task | Start | Finish | Complete | Total float |
| --- | --- | --- | --- | --- | --- |
| 1 | **Diplomas y Certificados v1** |  |  | 64% → 76% |  |
| 8 | **Panel de administrador** |  | 2025-07-02 A | 75% → 100% | 7d → none |
| 10 | Home |  | 2025-06-16 A | 50% → 100% | 19d → none |
| 15 | Detalle de certificados | 2025-06-27 A | 2025-07-01 A | 0% → 100% | 8d → none |

## Version 10 (saved 2025-10-04)

Note of the change: Podemos visualizar el formato actual de un certificado, para cambiarlo si no nos convence el diseño del mismo.

Last finish stays 2025-07-11. Complete tasks 13 → 15.

Changed:

| ID | Task | Start | Finish | Complete | Total float |
| --- | --- | --- | --- | --- | --- |
| 1 | **Diplomas y Certificados v1** |  | 2025-07-11 A | 76% → 100% |  |
| 17 | **Pruebas** | 2025-07-03 A | 2025-07-11 A | 0% → 100% | 0d → none |
| 18 | Pruebas con el cliente | 2025-07-03 A | 2025-07-09 A | 0% → 100% | 0d → none |
| 19 | Corrección y observaciones | 2025-07-10 A | 2025-07-11 A | 0% → 100% | 0d → none |
